# Software Development Plan

Schedule from MS Project, 2014-07-24 to 2014-08-28.

## Calendars

- Standard: Mon-Fri 08:00-12:00, 13:00-17:00; Sat-Sun 08:00-16:00.

## Resources

| Resource |
| --- |
| Akshay Kalyan |
| Matthew Chiam |
| Tommy Ngo |
| Nicholas Weatherburn |
| Michael Shafer |
| James Butler |
| Hugo Bateman |
| Bert Huang |
| Team |

## Schedule

| ID | WBS | Task | Type | Duration | Start | Finish | Predecessors | Total slack | Free slack | Resources | Work |
| --- | --- | --- | --- | --- | --- | --- | --- | --- | --- | --- | --- |
| 1 | 1 | Start | milestone | 0d | 2014-07-24 | 2014-07-24 |  | 1d | 0d |  |  |
| 2 | 2 | **Organisational Tasks** |  | 36d | 2014-07-24 | 2014-08-28 |  | 0d |  |  | 208h |
| 3 | 2.1 | **Meeting** |  | 36d | 2014-07-24 | 2014-08-28 |  | 0d |  |  | 88h |
| 4 | 2.1.1 | Meeting 1 |  | 1d | 2014-07-24 | 2014-07-24 |  | 35d |  | Team | 8h |
| 5 | 2.1.2 | Meeting 2 | manual | 1d | 2014-07-28 | 2014-07-28 |  |  |  | Team | 8h |
| 6 | 2.1.3 | Meeting 3 | manual | 1d | 2014-07-31 | 2014-07-31 |  |  |  | Team | 8h |
| 7 | 2.1.4 | Meeting 4 | manual | 1d | 2014-08-04 | 2014-08-04 |  |  |  | Team | 8h |
| 8 | 2.1.5 | Meeting 5 | manual | 1d | 2014-08-07 | 2014-08-07 |  |  |  | Team | 8h |
| 9 | 2.1.6 | Meeting 6 | manual | 1d | 2014-08-11 | 2014-08-11 |  |  |  | Team | 8h |
| 10 | 2.1.7 | Meeting 7 | manual | 1d | 2014-08-14 | 2014-08-14 |  |  |  | Team | 8h |
| 11 | 2.1.8 | Meeting 8 | manual | 1d | 2014-08-18 | 2014-08-18 |  |  |  | Team | 8h |
| 12 | 2.1.9 | Meeting 9 | manual | 1d | 2014-08-21 | 2014-08-21 |  |  |  | Team | 8h |
| 13 | 2.1.10 | Meeting 10 | manual | 1d | 2014-08-25 | 2014-08-25 |  |  |  | Team | 8h |
| 14 | 2.1.11 | Meeting 11 | manual | 1d | 2014-08-28 | 2014-08-28 |  |  |  | Team | 8h |
| 15 | 2.2 | **Presentation** |  | 22d | 2014-07-31 | 2014-08-21 |  | 0d |  |  | 120h |
| 16 | 2.2.1 | Presentation 1 | manual | 1d | 2014-07-31 | 2014-07-31 |  |  |  | Akshay Kalyan; Nicholas Weatherburn; Hugo Bateman | 24h |
| 17 | 2.2.2 | Presentation 2 | manual | 1d | 2014-08-07 | 2014-08-07 |  |  |  | James Butler; Tommy Ngo; Bert Huang; Matthew Chiam | 32h |
| 18 | 2.2.3 | Presentation 3 | manual | 1d | 2014-08-14 | 2014-08-14 |  |  |  | Michael Shafer; Tommy Ngo; Bert Huang; Matthew Chiam | 32h |
| 19 | 2.2.4 | Presentation 4 | manual | 1d | 2014-08-21 | 2014-08-21 |  |  |  | Akshay Kalyan; Hugo Bateman; James Butler; Nicholas Weatherburn | 32h |
| 20 | 3 | **Create Wiki** |  | 2d | 2014-07-24 | 2014-07-25 |  | 1d |  |  | 32h |
| 21 | 3.1 | Initialize Wiki for Project |  | 1d | 2014-07-24 | 2014-07-24 | 1 | 1d | 0d | Akshay Kalyan | 8h |
| 22 | 3.2 | Write Git Workflow Article |  | 1d | 2014-07-25 | 2014-07-25 | 21 | 1d | 0d | Michael Shafer | 8h |
| 23 | 3.3 | Write C++ Style Guide |  | 1d | 2014-07-25 | 2014-07-25 | 21 | 1d | 0d | Nicholas Weatherburn | 8h |
| 24 | 3.4 | Write Python Style Guide |  | 1d | 2014-07-25 | 2014-07-25 | 21 | 1d | 0d | Akshay Kalyan | 8h |

| ID | WBS | Task | Duration | Start | Finish | Predecessors | Total slack | Free slack | Resources | Work |
| --- | --- | --- | --- | --- | --- | --- | --- | --- | --- | --- |
| 25 | 4 | **General Training** | 1d | 2014-07-25 | 2014-07-25 |  | 1d |  |  | 8h |
| 26 | 4.1 | Basic ROS Tutorials | 1d | 2014-07-25 | 2014-07-25 | 21 | 1d | 0d | Team | 8h |
| 27 | 5 | **Specialised Training** | 3d | 2014-07-26 | 2014-07-28 |  | 1d |  |  | 192h |
| 28 | 5.1 | Run ROS Pathfinding Tutorial | 3d | 2014-07-26 | 2014-07-28 | 22, 23, 24, 26 | 1d | 0d | Tommy Ngo; Nicholas Weatherburn | 48h |
| 29 | 5.2 | Run ROS Services Tutorial | 3d | 2014-07-26 | 2014-07-28 | 22, 23, 24, 26 | 1d | 0d | Matthew Chiam | 24h |
| 30 | 5.3 | Run ROS Messages Tutorial | 3d | 2014-07-26 | 2014-07-28 | 22, 23, 24, 26 | 1d | 0d | Akshay Kalyan | 24h |
| 31 | 5.4 | Run ROS Stage Tutorial | 3d | 2014-07-26 | 2014-07-28 | 22, 23, 24, 26 | 1d | 0d | Bert Huang | 24h |
| 32 | 5.5 | Run ROS Build Tutorial | 3d | 2014-07-26 | 2014-07-28 | 22, 23, 24, 26 | 1d | 0d | James Butler | 24h |
| 33 | 5.6 | Run ROS Roslaunch Tutorial | 3d | 2014-07-26 | 2014-07-28 | 22, 23, 24, 26 | 1d | 0d | Michael Shafer; Hugo Bateman | 48h |
| 34 | 6 | **Project Implementation Alpha Release** | 16d | 2014-07-29 | 2014-08-13 |  | 1d |  |  | 552h |
| 35 | 6.1 | **Design System Architecture** | 5d | 2014-07-29 | 2014-08-02 |  | 1d |  |  | 64h |
| 36 | 6.1.1 | Design Robot Class Hierarchy | 1d | 2014-07-29 | 2014-07-29 | 28, 33, 29, 30, 31, 32 | 1d | 0d | Team | 8h |
| 37 | 6.1.2 | Design World | 1d | 2014-07-29 | 2014-07-29 | 28, 29, 30, 31, 32, 33 | 1d | 0d |  |  |
| 38 | 6.1.3 | Design Robot Appearance | 1d | 2014-07-29 | 2014-07-29 | 28, 33, 29, 30, 31, 32 | 1d | 0d | Team | 8h |
| 39 | 6.1.4 | **Design Robot Behaviours** | 4d | 2014-07-30 | 2014-08-02 |  | 1d |  |  | 48h |
| 40 | 6.1.4.1 | Design General Robot Behaviour | 3d | 2014-07-30 | 2014-08-01 | 36, 28, 33 | 1d | 0d | Team | 24h |
| 41 | 6.1.4.2 | Design Assistant Robot Behaviour | 1d | 2014-08-02 | 2014-08-02 | 40, 28, 33 | 1d | 0d | Team | 8h |
| 42 | 6.1.4.3 | Design Visitor Robot Behaviour | 1d | 2014-08-02 | 2014-08-02 | 40, 28, 33 | 1d | 0d | Team | 8h |
| 43 | 6.1.4.4 | Design Resident Robot Behaviour | 1d | 2014-08-02 | 2014-08-02 | 40, 28, 33 | 1d | 0d | Team | 8h |
| 44 | 6.2 | **Robot Implementation, Testing, Documentation** | 5d | 2014-08-02 | 2014-08-06 |  | 1d |  |  | 128h |
| 45 | 6.2.1 | Implement ‘General’ Robot | 4d | 2014-08-02 | 2014-08-05 | 40, 38 | 2d | 1d | Nicholas Weatherburn | 32h |
| 46 | 6.2.2 | Implement Resident Robot | 4d | 2014-08-03 | 2014-08-06 | 43, 38 | 1d | 0d | Tommy Ngo | 32h |
| 47 | 6.2.3 | Implement Visitor Robot | 4d | 2014-08-03 | 2014-08-06 | 42, 38 | 1d | 0d | James Butler | 32h |
| 48 | 6.2.4 | Implement Assistant Robot | 4d | 2014-08-03 | 2014-08-06 | 41, 38 | 1d | 0d | Michael Shafer | 32h |

| ID | WBS | Task | Type | Duration | Start | Finish | Predecessors | Total slack | Free slack | Resources | Work |
| --- | --- | --- | --- | --- | --- | --- | --- | --- | --- | --- | --- |
| 49 | 6.3 | **World Creation** |  | 2d | 2014-07-30 | 2014-07-31 |  | 7d |  |  | 32h |
| 50 | 6.3.1 | Create PGM File |  | 2d | 2014-07-30 | 2014-07-31 | 31, 36, 37, 38 | 7d | 6d | Bert Huang | 16h |
| 51 | 6.3.2 | Create World Objects |  | 2d | 2014-07-30 | 2014-07-31 | 31, 36, 37, 38 | 7d | 6d | Bert Huang | 16h |
| 52 | 6.4 | **Communications** |  | 2d | 2014-07-30 | 2014-07-31 |  | 7d |  |  | 48h |
| 53 | 6.4.1 | Create Basic ROS Topics |  | 2d | 2014-07-30 | 2014-07-31 | 29, 30, 36, 37, 38 | 7d | 6d | Matthew Chiam | 16h |
| 54 | 6.4.2 | Create Basic ROS Services |  | 2d | 2014-07-30 | 2014-07-31 | 29, 30, 36, 37, 38 | 7d | 6d | Matthew Chiam | 16h |
| 55 | 6.4.3 | Create Basic ROS Messages |  | 2d | 2014-07-30 | 2014-07-31 | 30, 29, 36, 37, 38 | 7d | 6d | Akshay Kalyan | 16h |
| 56 | 6.5 | **Integration Between World And Robots** |  | 3d | 2014-08-07 | 2014-08-09 |  | 1d |  |  | 24h |
| 57 | 6.5.1 | Integration Between World And Robots |  | 3d | 2014-08-07 | 2014-08-09 | 45, 46, 47, 48, 50, 51, 53, 54, 55 | 1d | 0d | Michael Shafer | 24h |
| 58 | 6.6 | **Build Tasks** |  | 4d | 2014-07-30 | 2014-08-02 |  | 8d |  |  | 96h |
| 59 | 6.6.1 | Create Build Scripts |  | 4d | 2014-07-30 | 2014-08-02 | 32, 36, 37, 38 | 8d | 0d | Michael Shafer | 32h |
| 60 | 6.6.2 | Test Build Scripts |  | 2d | 2014-07-30 | 2014-07-31 | 32, 59SS | 8d | 0d | Michael Shafer | 16h |
| 61 | 6.6.3 | Run/Launch Build Scripts |  | 2d | 2014-08-01 | 2014-08-02 | 60, 32 | 8d | 7d | James Butler | 16h |
| 62 | 6.6.4 | Create Convenience Scripts |  | 4d | 2014-07-30 | 2014-08-02 | 32, 36, 37, 38 | 8d | 7d | Hugo Bateman | 32h |
| 63 | 6.7 | **Acceptance Testing** |  | 4d | 2014-08-10 | 2014-08-13 |  | 1d |  |  | 32h |
| 64 | 6.7.1 | Acceptance Testing Of Alpha Release |  | 4d | 2014-08-10 | 2014-08-13 | 57, 61, 62 | 1d | 0d | Team | 32h |
| 65 | 6.8 | Write Documentation |  | 16d | 2014-07-29 | 2014-08-13 | 36SS, 37SS, 38SS | 1d | 0d | Team | 128h |
| 66 | 7 | Alpha Release | milestone, manual | 0d | 2014-08-14 | 2014-08-14 | 64, 65 |  |  |  |  |
| 67 | 8 | **Project Implementation Final Release** |  | 14d | 2014-08-14 | 2014-08-27 |  | 1d |  |  | 1360h |
| 68 | 8.1 | **Design System Architecture** |  | 2d | 2014-08-14 | 2014-08-15 |  | 1d |  |  | 224h |
| 69 | 8.1.1 | Design Robot Class Hierarchy |  | 2d | 2014-08-14 | 2014-08-15 | 66 | 1d | 0d | Team | 16h |
| 70 | 8.1.2 | Design World |  | 2d | 2014-08-14 | 2014-08-15 | 66 | 1d | 0d | Team | 16h |
| 71 | 8.1.3 | Design Interactive GUI |  | 2d | 2014-08-14 | 2014-08-15 | 66 | 1d | 0d | Team | 16h |
| 72 | 8.1.4 | Design Event Scheduler Logic |  | 2d | 2014-08-14 | 2014-08-15 | 66 | 1d | 0d | Team | 16h |
| 73 | 8.1.5 | Design Random Event Logic |  | 2d | 2014-08-14 | 2014-08-15 | 66 | 1d | 0d | Team | 16h |

| ID | WBS | Task | Duration | Start | Finish | Predecessors | Total slack | Free slack | Resources | Work |
| --- | --- | --- | --- | --- | --- | --- | --- | --- | --- | --- |
| 74 | 8.1.6 | **Design Robot Behaviours** | 2d | 2014-08-14 | 2014-08-15 |  | 1d |  |  | 144h |
| 75 | 8.1.6.1 | Design Resident Robot Behaviour | 2d | 2014-08-14 | 2014-08-15 | 66 | 1d | 0d | Team | 16h |
| 76 | 8.1.6.2 | Design Friend Robot Behaviour | 2d | 2014-08-14 | 2014-08-15 | 66 | 1d | 0d | Team | 16h |
| 77 | 8.1.6.3 | Design Relative Robot Behaviour | 2d | 2014-08-14 | 2014-08-15 | 66 | 1d | 0d | Team | 16h |
| 78 | 8.1.6.4 | Design Doctor Robot Behaviour | 2d | 2014-08-14 | 2014-08-15 | 66 | 1d | 0d | Team | 16h |
| 79 | 8.1.6.5 | Design Nurse Robot Behaviour | 2d | 2014-08-14 | 2014-08-15 | 66 | 1d | 0d | Team | 16h |
| 80 | 8.1.6.6 | Design Medication Assistant Robot Behaviour | 2d | 2014-08-14 | 2014-08-15 | 66 | 1d | 0d | Team | 16h |
| 81 | 8.1.6.7 | Design Cook Assistant Robot Behaviour | 2d | 2014-08-14 | 2014-08-15 | 66 | 1d | 0d | Team | 16h |
| 82 | 8.1.6.8 | Design Companion Assistant Robot Behaviour | 2d | 2014-08-14 | 2014-08-15 | 66 | 1d | 0d | Team | 16h |
| 83 | 8.1.6.9 | Design Entertainment Assistant Robot Behaviour | 2d | 2014-08-14 | 2014-08-15 | 66 | 1d | 0d | Team | 16h |
| 84 | 8.2 | **Robot Implementation** | 7d | 2014-08-16 | 2014-08-22 |  | 1d |  |  | 504h |
| 85 | 8.2.1 | Implement Resident Robot | 7d | 2014-08-16 | 2014-08-22 | 75, 69 | 1d | 0d | Nicholas Weatherburn | 56h |
| 86 | 8.2.2 | Implement Friend Robot | 7d | 2014-08-16 | 2014-08-22 | 76, 69 | 1d | 0d | Michael Shafer | 56h |
| 87 | 8.2.3 | Implement Relative Robot | 7d | 2014-08-16 | 2014-08-22 | 77, 69 | 1d | 0d | Michael Shafer | 56h |
| 88 | 8.2.4 | Implement Doctor Robot | 7d | 2014-08-16 | 2014-08-22 | 78, 69 | 1d | 0d | Tommy Ngo | 56h |
| 89 | 8.2.5 | Implement Nurse Robot | 7d | 2014-08-16 | 2014-08-22 | 79, 69 | 1d | 0d | James Butler | 56h |
| 90 | 8.2.6 | Implement Medication Assistant Robot | 7d | 2014-08-16 | 2014-08-22 | 80, 69 | 1d | 0d | Tommy Ngo | 56h |
| 91 | 8.2.7 | Implement Cook Assistant Robot | 7d | 2014-08-16 | 2014-08-22 | 81, 69 | 1d | 0d | Bert Huang | 56h |
| 92 | 8.2.8 | Implement Entertainment Assistant Robot | 7d | 2014-08-16 | 2014-08-22 | 83, 69 | 1d | 0d | Akshay Kalyan | 56h |
| 93 | 8.2.9 | Implement Companion Assistant Robot | 7d | 2014-08-16 | 2014-08-22 | 82, 69 | 1d | 0d | Hugo Bateman | 56h |
| 94 | 8.3 | **Event Scheduler Implementation** | 7d | 2014-08-16 | 2014-08-22 |  | 1d | 0d |  | 56h |
| 95 | 8.3.1 | Implement Event Scheduler | 7d | 2014-08-16 | 2014-08-22 | 72 | 1d | 0d | Bert Huang | 56h |
| 96 | 8.4 | **Interactive GUI Implementation** | 7d | 2014-08-16 | 2014-08-22 |  | 1d | 0d |  | 56h |
| 97 | 8.4.1 | Implement Interactive GUI | 7d | 2014-08-16 | 2014-08-22 | 71 | 1d | 0d | Hugo Bateman | 56h |

| ID | WBS | Task | Type | Duration | Start | Finish | Predecessors | Total slack | Free slack | Resources | Work |
| --- | --- | --- | --- | --- | --- | --- | --- | --- | --- | --- | --- |
| 98 | 8.5 | **Random Event Logic Implementation** |  | 7d | 2014-08-16 | 2014-08-22 |  | 1d | 0d |  | 168h |
| 99 | 8.5.1 | Implement Ill Random Event |  | 7d | 2014-08-16 | 2014-08-22 | 73 | 1d | 0d | Matthew Chiam | 56h |
| 100 | 8.5.2 | Implement Severly Ill Random Event |  | 7d | 2014-08-16 | 2014-08-22 | 73 | 1d | 0d | Matthew Chiam | 56h |
| 101 | 8.5.3 | Implement Moral Support Random Event |  | 7d | 2014-08-16 | 2014-08-22 | 73 | 1d | 0d | Matthew Chiam | 56h |
| 102 | 8.6 | **World Creation** |  | 4d | 2014-08-16 | 2014-08-19 |  | 4d |  |  | 48h |
| 103 | 8.6.1 | Add House Objects |  | 2d | 2014-08-16 | 2014-08-17 | 70 | 4d | 0d | James Butler | 16h |
| 104 | 8.6.2 | Implement Stage Node |  | 2d | 2014-08-16 | 2014-08-17 | 70 | 6d | 5d | James Butler | 16h |
| 105 | 8.6.3 | Add Attributes For House Objects |  | 2d | 2014-08-18 | 2014-08-19 | 103 | 4d | 3d | James Butler | 16h |
| 106 | 8.7 | **Communications** |  | 4d | 2014-08-16 | 2014-08-19 |  | 4d |  |  | 96h |
| 107 | 8.7.1 | Create ROS Topics |  | 4d | 2014-08-16 | 2014-08-19 | 75, 76, 77, 78, 79, 80, 81, 82, 83 | 4d | 3d | Matthew Chiam | 32h |
| 108 | 8.7.2 | Create ROS Services |  | 4d | 2014-08-16 | 2014-08-19 | 75, 76, 77, 78, 79, 80, 81, 82, 83 | 4d | 3d | Michael Shafer | 32h |
| 109 | 8.7.3 | Create ROS Messages |  | 4d | 2014-08-16 | 2014-08-19 | 75, 76, 77, 78, 79, 80, 81, 82, 83 | 4d | 3d | Akshay Kalyan | 32h |
| 110 | 8.8 | **Integration Between World And Robots** |  | 2d | 2014-08-23 | 2014-08-24 |  | 1d |  |  | 16h |
| 111 | 8.8.1 | Integration Between World And Robots |  | 2d | 2014-08-23 | 2014-08-24 | 85, 86, 87, 88, 89, 90, 91, 92, 93, 108, 109, 103, 104, 105, 107, 101, 98, 100, 99, 96, 97, 94, 95 | 1d | 0d | Michael Shafer | 16h |
| 112 | 8.9 | **Build Tasks** |  | 3d | 2014-08-16 | 2014-08-18 |  | 7d |  |  | 56h |
| 113 | 8.9.1 | Create Build Scripts |  | 2d | 2014-08-16 | 2014-08-17 | 85SS, 86SS, 87SS, 88SS, 89SS, 90SS, 91SS, 92SS, 93SS, 101SS, 98SS, 100SS, 99SS, 96SS, 97SS, 94SS, 95SS | 7d | 0d | Michael Shafer | 16h |
| 114 | 8.9.2 | Test Build Scripts |  | 2d | 2014-08-16 | 2014-08-17 | 113SS | 7d | 0d | Michael Shafer | 16h |
| 115 | 8.9.3 | Run/Launch Build Scripts |  | 1d | 2014-08-18 | 2014-08-18 | 114 | 7d | 6d | James Butler | 8h |
| 116 | 8.9.4 | Create Convenience Scripts |  | 2d | 2014-08-16 | 2014-08-17 | 113SS | 8d | 7d | Hugo Bateman | 16h |
| 117 | 8.10 | **Acceptance Testing** |  | 3d | 2014-08-25 | 2014-08-27 |  | 1d |  |  | 24h |
| 118 | 8.10.1 | Acceptance Testing Final Version |  | 3d | 2014-08-25 | 2014-08-27 | 111, 115, 116 | 1d | 0d | Team | 24h |
| 119 | 8.11 | Write Documentation |  | 14d | 2014-08-14 | 2014-08-27 | 69SS, 70SS, 73SS, 75SS, 76SS, 77SS, 78SS, 79SS, 80SS, 81SS, 82SS, 83SS, 71SS, 72SS | 1d | 0d | Team | 112h |
| 120 | 9 | Final Release | milestone, manual | 0d | 2014-08-28 | 2014-08-28 | 118, 119 |  |  |  |  |
| 121 | 10 | End | milestone | 0d | 2014-08-28 | 2014-08-28 | 120 | 1d |  |  |  |
